# SWARM EX COMMs

How a schedule from GanttProject changed from version to version. A marks actual dates.

## Version 1 (saved 2026-09-09)

Note of the change: added gantt chart for comms tracking

| ID | WBS | Task | Duration | Start | Finish | Predecessors |
| --- | --- | --- | --- | --- | --- | --- |
| 1 | 1 | **Gpredict** | 26d | 2026-09-09 | 2026-10-14 |  |
| 2 |  | Create motor test plan | 4d | 2026-09-09 | 2026-09-14 |  |
| 3 |  | Checking remaining things to raise antenna | 3d | 2026-09-15 | 2026-09-17 | 2 |
| 4 |  | Executin motor tests | 7d | 2026-09-18 | 2026-09-28 | 3 |
| 5 |  | Raising antenna | 4d | 2026-09-29 | 2026-10-02 | 4 |
| 6 |  | finding exact location of ground station | 4d | 2026-09-16 | 2026-09-21 |  |
| 7 |  | g predict tracking with TLEs | 5d | 2026-09-22 | 2026-09-28 | 6 |
| 8 |  | interface gnu with g predict | 5d | 2026-09-29 | 2026-10-05 | 7 |
| 9 |  | testing sat tracking | 7d | 2026-10-06 | 2026-10-14 | 5, 8 |
| 10 | 2 | **Set up ground station setup** | 19d | 2026-09-10 | 2026-10-06 |  |
| 11 |  | HFSS Transfer | 3d | 2026-09-15 | 2026-09-17 |  |
| 12 |  | Grab GNU and hydra from GS PC in STIG | 4d | 2026-09-10 | 2026-09-15 |  |
| 13 |  | Setup gnu and hydra on new setup | 5d | 2026-09-16 | 2026-09-22 | 12 |
| 14 |  | Get gnu and hydra talking | 10d | 2026-09-23 | 2026-10-06 | 13 |
| 15 | 3 | **Li-2 Dev Work** | 18d | 2026-09-16 | 2026-10-09 |  |
| 16 |  | MCT | 8d | 2026-09-16 | 2026-09-25 |  |
| 17 |  | SCT1 | 5d | 2026-09-28 | 2026-10-02 | 16 |
| 18 |  | SCT2 | 5d | 2026-10-05 | 2026-10-09 | 17 |

## Version 2 (saved 2026-09-12)

Note of the change: swarm ex planning

Last finish 2026-10-14 → 2026-11-02 (+19d).

Added:

| ID | Task | Duration | Start | Finish | Predecessors |
| --- | --- | --- | --- | --- | --- |
| 10 | **Hydra Lithium Communication** | 13d | 2026-09-16 | 2026-10-02 |  |
| 11 | MCT: Review test docs | 1d | 2026-09-16 | 2026-09-16 |  |
| 12 | MCT: Bench setup | 2d | 2026-09-17 | 2026-09-18 | 11 |
| 13 | MCT: Practice run-through of test | 1d | 2026-09-21 | 2026-09-21 | 12 |
| 14 | MCT: Full run through of test | 2d | 2026-09-22 | 2026-09-23 | 13 |
| 15 | MCT: Troubleshooting | 1d | 2026-09-24 | 2026-09-24 | 14 |
| 16 | SCT-1: Review test docs | 1d | 2026-09-25 | 2026-09-25 | 15 |
| 17 | SCT-1: Bench setup | 1d | 2026-09-28 | 2026-09-28 | 16 |
| 18 | SCT-1: Practice run-through of test | 1d | 2026-09-29 | 2026-09-29 | 17 |
| 19 | SCT-1: Full run through of test | 2d | 2026-09-30 | 2026-10-01 | 18 |
| 20 | SCT-1: Troubleshooting | 1d | 2026-10-02 | 2026-10-02 | 19 |
| 21 | **Ground Station PC Architecture** | 20d | 2026-09-10 | 2026-10-07 |  |
| 22 | Transferring HFSS to new 443 machine | 4d | 2026-09-10 | 2026-09-15 |  |
| 23 | Setting up laptop for GND station | 3d | 2026-09-16 | 2026-09-18 | 22 |
| 24 | Connecting laptop and 443 machine | 3d | 2026-09-21 | 2026-09-23 | 23 |
| 25 | Verify ground station arch with current setup | 3d | 2026-09-24 | 2026-09-28 | 24 |
| 26 | Planning final GND station architecture | 7d | 2026-09-29 | 2026-10-07 | 25 |
| 27 | **Running SCT-2** | 21d | 2026-10-05 | 2026-11-02 |  |
| 28 | Review SCT2 procedure | 2d | 2026-10-05 | 2026-10-06 |  |
| 29 | Reverify Hydra-Li Comms | 3d | 2026-10-07 | 2026-10-09 | 28 |
| 30 | Reverify GND station setup | 3d | 2026-10-12 | 2026-10-14 | 29 |
| 31 | Bench setup | 2d | 2026-10-15 | 2026-10-16 | 30 |
| 32 | Practice run-through of SCT-2 | 2d | 2026-10-19 | 2026-10-20 | 31 |
| 33 | Full SCT2 runthrough | 4d | 2026-10-21 | 2026-10-26 | 32 |
| 34 | Testing and troubleshooting | 3d | 2026-10-27 | 2026-10-29 | 33 |
| 35 | Post-test documentation review | 2d | 2026-10-30 | 2026-11-02 | 34 |

Removed: 10 Set up ground station setup; 11 HFSS Transfer; 12 Grab GNU and hydra from GS PC in STIG; 13 Setup gnu and hydra on new setup; 14 Get gnu and hydra talking; 15 Li-2 Dev Work; 16 MCT; 17 SCT1; 18 SCT2
